# DDL_ProjectSchedule_v1.0_EN

Schedule from MS Project, 2016-05-09 to 2016-08-26.

## Calendars

- Standard: Mon-Fri 08:00-12:00, 13:00-17:00; Sat-Sun off.

## Resources

| Resource |
| --- |
| PROJECT TEAM |
| TrongPV |
| SonNT |
| TamNV |
| DocTeam |
| DevTeam |
| DesignTeam |
| PhucVT |
| DucNM |
| TestTEAM |

## Schedule

| ID | WBS | Task | Type | Duration | Start | Finish | Predecessors | Total slack | Free slack | Constraint | Resources | Work |
| --- | --- | --- | --- | --- | --- | --- | --- | --- | --- | --- | --- | --- |
| 1 | 1 | **IVSN** |  | 80d | 2016-05-09 | 2016-08-26 |  |  |  |  |  | 488h |
| 2 | 1.1 | **Initiation** |  | 15d | 2016-05-09 | 2016-05-27 |  |  |  |  |  | 288h |
| 3 | 1.1.1 | Form up team roles |  | 0.5d | 2016-05-09 | 2016-05-09 |  | 1d | 0d |  |  |  |
| 4 | 1.1.2 | Select project idea |  | 0.5d | 2016-05-09 | 2016-05-09 | 3 | 1d | 0d |  | PROJECT TEAM | 4h |
| 5 | 1.1.3 | Kick-off meeting | milestone | 0d | 2016-05-09 | 2016-05-09 | 4 | 14d |  |  | PROJECT TEAM |  |
| 6 | 1.1.4 | **Develop project idea** |  | 2d | 2016-05-10 | 2016-05-11 | 4 | 0.5d |  |  |  | 16h |
| 7 | 1.1.4.1 | Define project scope |  | 0.5d | 2016-05-10 | 2016-05-10 |  | 1.5d | 0d |  | PROJECT TEAM | 4h |
| 8 | 1.1.4.2 | Define project features |  | 0.5d | 2016-05-10 | 2016-05-10 | 7 | 1.5d |  |  | PROJECT TEAM | 4h |
| 9 | 1.1.4.3 | SRS/PP Review checklist | manual | 1d | 2016-05-11 | 2016-05-11 |  |  |  | start no earlier than 2016-05-11 | TamNV | 8h |
| 10 | 1.1.5 | **Project Introduction** |  | 4d | 2016-05-12 | 2016-05-18 | 6 |  |  |  |  | 48h |
| 11 | 1.1.5.1 | Create Project Introduction |  | 2d | 2016-05-12 | 2016-05-16 |  | 0d |  |  | PhucVT; TrongPV | 32h |
| 12 | 1.1.5.2 | Review Project Introduction |  | 1d | 2016-05-16 | 2016-05-17 | 11 | 0d |  |  | TamNV | 8h |
| 13 | 1.1.5.3 | Update Project Introduction |  | 1d | 2016-05-17 | 2016-05-18 | 12 | 0d |  |  | PROJECT TEAM | 8h |
| 14 | 1.1.5.4 | Complete Project Introduction | milestone | 0d | 2016-05-18 | 2016-05-18 | 13 | 72.5d |  | start no earlier than 2016-05-18 |  |  |
| 15 | 1.1.6 | **Project Plan** |  | 6.5d | 2016-05-12 | 2016-05-20 |  |  |  |  |  | 72h |
| 16 | 1.1.6.1 | Create Project Plan in MS Word |  | 3d | 2016-05-12 | 2016-05-17 |  | 3.5d | 0d |  | DucNM | 24h |
| 17 | 1.1.6.2 | Create Project Schedule in .mmp file |  | 1.5d | 2016-05-16 | 2016-05-17 | 16FF | 3.5d | 0.5d |  | DucNM | 12h |
| 18 | 1.1.6.3 | Create CM Plan |  | 1d | 2016-05-16 | 2016-05-17 | 16FF | 3.5d | 0.5d |  | DucNM; SonNT | 16h |
| 19 | 1.1.6.4 | Review Project Plan, CMPlan, Schedule |  | 0.5d | 2016-05-18 | 2016-05-18 | 16, 17, 18 | 71d | 1d | start no earlier than 2016-05-18 | PROJECT TEAM | 4h |
| 20 | 1.1.6.5 | Update Project Plan, CMPlan, Schedule |  | 0.5d | 2016-05-19 | 2016-05-19 | 19 | 70d | 0d | finish no earlier than 2016-05-19 | PhucVT; TrongPV | 8h |
| 21 | 1.1.6.6 | Complete Project Plan |  | 1d | 2016-05-20 | 2016-05-20 | 20 | 70d |  | start no earlier than 2016-05-20 | PROJECT TEAM | 8h |
| 22 | 1.1.7 | **User Requirement Specification** |  | 3d | 2016-05-11 | 2016-05-13 |  |  |  |  |  | 40h |
| 23 | 1.1.7.1 | Create User Requirement Sepecification |  | 2d | 2016-05-11 | 2016-05-12 |  | 0d |  |  | TamNV; DucNM | 32h |
| 24 | 1.1.7.2 | Review User Requirement Specification |  | 0.5d | 2016-05-13 | 2016-05-13 | 23 | 0d |  |  | SonNT | 4h |
| 25 | 1.1.7.3 | Update User Requirement Specification |  | 0.5d | 2016-05-13 | 2016-05-13 | 24 | 0d |  |  | TamNV | 4h |
| 26 | 1.1.7.4 | Complete User Requirement Specification | milestone | 0d | 2016-05-13 | 2016-05-13 | 25 | 0d |  |  |  |  |

| ID | WBS | Task | Type | Duration | Start | Finish | Predecessors | Total slack | Free slack | Constraint | Resources | Work |
| --- | --- | --- | --- | --- | --- | --- | --- | --- | --- | --- | --- | --- |
| 27 | 1.1.8 | **Q&A Sheet** |  | 2d | 2016-05-19 | 2016-05-20 |  | 0d |  |  |  | 16h |
| 28 | 1.1.8.1 | Create Q&A sheet | manual | 1d | 2016-05-19 | 2016-05-19 |  |  |  |  | TamNV | 8h |
| 29 | 1.1.8.2 | Review Q&A sheet | manual | 0.5d | 2016-05-20 | 2016-05-20 | 28 |  |  |  | DucNM | 4h |
| 30 | 1.1.8.3 | Translate Q&A sheet to Japanese | manual | 0.5d | 2016-05-20 | 2016-05-20 | 29 |  |  |  | TamNV | 4h |
| 31 | 1.1.9 | Create progress report 1 |  | 0.5d | 2016-05-20 | 2016-05-20 |  | 5.5d | 0.5d | start no earlier than 2016-05-20 | DucNM | 4h |
| 32 | 1.1.10 | Submit progress report 1 | milestone | 0d | 2016-05-20 | 2016-05-20 | 31, 22, 15, 27 | 5d |  |  | DucNM |  |
| 33 | 1.1.11 | **Technology Research (Part 1)** |  | 3d | 2016-05-23 | 2016-05-25 |  |  |  |  |  | 88h |
| 34 | 1.1.11.1 | Study .net MVC 5 |  | 3d | 2016-05-23 | 2016-05-25 |  | 67d |  | start no earlier than 2016-05-23 | DevTeam | 24h |
| 35 | 1.1.11.2 | Study AngularJS |  | 3d | 2016-05-23 | 2016-05-25 |  | 0d |  |  | DucNM; SonNT | 48h |
| 36 | 1.1.11.3 | Study Bootstraps, HTML5 & CSS3 |  | 3d | 2016-05-23 | 2016-05-25 |  | 0d |  |  | DesignTeam [66.7%] | 16h |
| 37 | 1.1.12 | **Enviroment** |  | 2d | 2016-05-26 | 2016-05-27 |  |  |  |  |  |  |
| 38 | 1.1.12.1 | Create guideline to install and use tools & environments | manual | 1d | 2016-05-26 | 2016-05-26 |  |  |  |  |  |  |
| 39 | 1.1.12.2 | Install tool & enviroment | manual | 0.5d | 2016-05-27 | 2016-05-27 |  |  |  |  |  |  |
| 40 | 1.1.12.3 | Training tool and enviroment | manual | 0.5d | 2016-05-27 | 2016-05-27 |  |  |  |  |  |  |
| 41 | 1.2 | **Solution** |  | 25d | 2016-05-30 | 2016-07-01 | 2 |  |  |  |  | 88h |
| 42 | 1.2.1 | **Technology Research (Part 2)** |  | 5d | 2016-05-30 | 2016-06-03 |  |  |  |  |  |  |
| 43 | 1.2.1.1 | Learn DataBase | manual | 3d | 2016-05-30 | 2016-06-01 |  |  |  |  |  |  |
| 44 | 1.2.2 | Demo & Prototypes | manual | 5d | 2016-05-25 | 2016-05-31 |  |  |  |  |  |  |
| 45 | 1.2.3 | **Software Requirement Specification** |  | 5d | 2016-06-06 | 2016-06-10 |  |  |  |  |  | 40h |
| 46 | 1.2.3.1 | **Functional Requirements Specification** |  | 2d | 2016-06-06 | 2016-06-07 |  |  |  |  |  | 16h |
| 47 | 1.2.3.1.1 | Define User Client Module functional Requirements | manual | 1d | 2016-06-06 | 2016-06-06 |  |  |  |  | SonNT | 8h |
| 48 | 1.2.3.1.2 | Define Admin Module functional Requirments | manual | 1d | 2016-06-07 | 2016-06-07 | 47SS |  |  |  | TrongPV | 8h |
| 49 | 1.2.3.2 | **Non-functional Requirements Specification** |  | 3d | 2016-06-06 | 2016-06-08 |  |  |  |  |  | 24h |
| 50 | 1.2.3.2.1 | Define Security Requirements | manual | 1d | 2016-06-06 | 2016-06-06 |  |  |  |  | PhucVT | 8h |
| 51 | 1.2.3.2.2 | Define Performane Requirements | manual | 1d | 2016-06-07 | 2016-06-07 |  |  |  |  | DucNM | 8h |
| 52 | 1.2.3.2.3 | Define User-interface Requirements | manual | 1d | 2016-06-08 | 2016-06-08 |  |  |  | start no earlier than 2016-06-08 | DucNM | 8h |

| ID | WBS | Task | Type | Duration | Start | Finish | Predecessors | Total slack | Free slack | Resources | Work |
| --- | --- | --- | --- | --- | --- | --- | --- | --- | --- | --- | --- |
| 53 | 1.2.4 | **System Design** |  | 15d | 2016-06-01 | 2016-06-21 |  |  |  |  | 48h |
| 54 | 1.2.4.1 | Create design review checklist | manual | 1d | 2016-06-01 | 2016-06-01 |  |  |  |  |  |
| 55 | 1.2.4.2 | **Architectural Design** |  | 3d | 2016-06-01 | 2016-06-03 |  |  |  |  | 48h |
| 56 | 1.2.4.2.1 | Define architectural design |  | 1d | 2016-06-01 | 2016-06-01 |  | 2d |  |  |  |
| 57 | 1.2.4.2.2 | Define system features |  | 2d | 2016-06-01 | 2016-06-02 |  | 1d |  |  |  |
| 58 | 1.2.4.2.3 | Study and choose suitable architectural design |  | 2d | 2016-06-01 | 2016-06-02 |  | 1d | 0d |  |  |
| 59 | 1.2.4.2.4 | Create Architectural design |  | 3d | 2016-06-01 | 2016-06-03 |  | 0d |  | DucNM; SonNT | 48h |
| 60 | 1.2.4.2.5 | Review architectural design |  | 1d | 2016-06-01 | 2016-06-01 |  | 2d |  |  |  |
| 61 | 1.2.4.2.6 | Update Architectural Design |  | 1d | 2016-06-01 | 2016-06-01 |  | 2d |  |  |  |
| 62 | 1.2.4.2.7 | Complete Architectural Design version 1.0 | milestone, manual | 0d | 2016-06-03 | 2016-06-03 | 58 |  |  |  |  |
| 63 | 1.2.4.3 | **Screen design** |  | 5d | 2016-06-01 | 2016-06-07 |  |  |  |  |  |
| 64 | 1.2.4.3.1 | Create screen flow document |  | 2d | 2016-06-01 | 2016-06-02 |  | 3d |  |  |  |
| 65 | 1.2.4.3.2 | Create client screen design |  | 2d | 2016-06-01 | 2016-06-02 |  | 3d |  |  |  |
| 66 | 1.2.4.3.3 | Create admin screen design |  | 2d | 2016-06-01 | 2016-06-02 |  | 3d |  |  |  |
| 67 | 1.2.4.3.4 | Review screen design |  | 1d | 2016-06-01 | 2016-06-01 |  | 4d |  |  |  |
| 68 | 1.2.4.3.5 | Update screen design |  | 1d | 2016-06-01 | 2016-06-01 |  | 4d |  |  |  |
| 69 | 1.2.4.3.6 | Complete screen design | milestone | 0d | 2016-06-01 | 2016-06-01 |  | 5d |  |  |  |
| 70 | 1.2.4.4 | **Database design** |  | 3d? | 2016-06-01 | 2016-06-03 |  | 12d |  |  |  |
| 71 | 1.2.4.4.1 | Create database design |  | 3d | 2016-06-01 | 2016-06-03 |  | 12d |  |  |  |
| 72 | 1.2.4.4.2 | Review database design |  | 0.5d? | 2016-06-01 | 2016-06-01 |  | 14.5d |  |  |  |
| 73 | 1.2.4.4.3 | Update database design |  | 1d | 2016-06-01 | 2016-06-01 |  | 14d |  |  |  |
| 74 | 1.2.4.4.4 | Complete database design | milestone | 0d | 2016-06-01 | 2016-06-01 |  | 15d |  |  |  |
| 75 | 1.2.4.5 | **Class/Component Design** |  | 5d | 2016-06-15 | 2016-06-21 |  |  |  |  |  |
| 76 | 1.2.4.5.1 | Define Class and Component |  | 1d | 2016-06-15 | 2016-06-15 |  | 4d |  |  |  |
| 77 | 1.2.4.5.2 | Create Class/component design |  | 3d | 2016-06-15 | 2016-06-17 |  | 2d |  |  |  |
| 78 | 1.2.4.5.3 | Review Class/component design |  | 1d | 2016-06-15 | 2016-06-15 |  | 4d |  |  |  |
| 79 | 1.2.4.5.4 | Update Class/component design |  | 1d | 2016-06-15 | 2016-06-15 |  | 4d |  |  |  |
| 80 | 1.2.4.5.5 | Complete Class/component design | milestone | 0d | 2016-06-15 | 2016-06-15 |  | 5d |  |  |  |
| 81 | 1.2.5 | Create progress report 2 | manual | 1d | 2016-06-03 | 2016-06-06 |  |  |  |  |  |
| 82 | 1.2.6 | Submit progress report 2 | milestone, manual | 0d | 2016-06-06 | 2016-06-06 |  |  |  |  |  |

| ID | WBS | Task | Type | Duration | Start | Finish | Predecessors | Total slack | Free slack |
| --- | --- | --- | --- | --- | --- | --- | --- | --- | --- |
| 83 | 1.2.7 | **Testing** |  | 6d | 2016-06-13 | 2016-06-20 | 82 |  |  |
| 84 | 1.2.7.1 | Create test plan/case checklists |  | 1d | 2016-06-13 | 2016-06-13 |  | 0d |  |
| 85 | 1.2.7.2 | Create test plan |  | 3d | 2016-06-14 | 2016-06-16 | 84 | 0d |  |
| 86 | 1.2.7.3 | Review test plan |  | 1d | 2016-06-17 | 2016-06-17 | 85 | 0d |  |
| 87 | 1.2.7.4 | Update test plan |  | 1d | 2016-06-20 | 2016-06-20 | 86 | 0d |  |
| 88 | 1.2.7.5 | Test plan complete | milestone | 0d | 2016-06-20 | 2016-06-20 | 87 | 0d |  |
| 89 | 1.2.8 | Create progress report 3 | manual | 1d | 2016-06-17 | 2016-06-17 |  |  |  |
| 90 | 1.2.9 | Submit progress report 3 | milestone, manual | 0d | 2016-06-24 | 2016-06-24 |  |  |  |
| 91 | 1.3 | **Construction** |  | 31d | 2016-07-04 | 2016-08-15 |  |  |  |
| 92 | 1.3.1 | **Define Coding Standards** |  | 1d | 2016-07-04 | 2016-07-04 |  |  |  |
| 93 | 1.3.1.1 | Create Coding Convention |  | 1d | 2016-07-04 | 2016-07-04 |  | 0d |  |
| 94 | 1.3.1.2 | Create Code & UT Test review checklist |  | 1d | 2016-07-04 | 2016-07-04 |  | 0d |  |
| 95 | 1.3.2 | **Screen Design** |  | 2d | 2016-07-04 | 2016-07-05 |  | 10d | 2d |
| 96 | 1.3.2.1 | Refine screen design document and prototype |  | 2d | 2016-07-04 | 2016-07-05 |  | 10d |  |
| 97 | 1.3.3 | **Coding & Unit test** |  | 18d | 2016-07-05 | 2016-07-28 |  | 8d | 0d |
| 98 | 1.3.3.1 | Structure core modules & source code common |  | 3d | 2016-07-05 | 2016-07-07 | 93 | 8d | 0d |
| 99 | 1.3.3.2 | **Client User Module** |  | 10d | 2016-07-08 | 2016-07-21 | 98, 95, 92 | 8d | 5d |
| 100 | 1.3.3.2.1 | Home Page Module |  | 3d | 2016-07-08 | 2016-07-12 |  | 10d | 0d |
| 101 | 1.3.3.2.2 | Login/ Logout Module |  | 2d | 2016-07-13 | 2016-07-14 | 100 | 10d | 0d |
| 102 | 1.3.3.2.3 | **Project module** |  | 8d | 2016-07-08 | 2016-07-19 |  | 8d | 0d |
| 103 | 1.3.3.2.3.1 | Create/manage a project Module |  | 5d | 2016-07-08 | 2016-07-14 |  | 8d | 0d |
| 104 | 1.3.3.2.3.2 | View/Back a project Module |  | 3d | 2016-07-15 | 2016-07-19 | 103 | 8d |  |
| 105 | 1.3.3.2.4 | User Personal Page Module |  | 3d | 2016-07-08 | 2016-07-12 |  | 9d | 0d |
| 106 | 1.3.3.2.5 | Search Module |  | 2d | 2016-07-20 | 2016-07-21 | 102 | 8d | 0d |
| 107 | 1.3.3.2.6 | Message Module |  | 4d | 2016-07-13 | 2016-07-18 | 105 | 9d | 0d |

| ID | WBS | Task | Type | Duration | Start | Finish | Predecessors | Total slack | Free slack |
| --- | --- | --- | --- | --- | --- | --- | --- | --- | --- |
| 108 | 1.3.3.3 | **Admin Module** |  | 10d | 2016-07-15 | 2016-07-28 | 98, 95, 92 | 8d | 0d |
| 109 | 1.3.3.3.1 | Login/ Logout module |  | 2d | 2016-07-15 | 2016-07-18 | 101 | 10d | 0d |
| 110 | 1.3.3.3.2 | Manage Users Module |  | 4d | 2016-07-19 | 2016-07-22 | 107 | 9d | 0d |
| 111 | 1.3.3.3.3 | Manage Projects Module |  | 5d | 2016-07-22 | 2016-07-28 | 106 | 8d |  |
| 112 | 1.3.3.3.4 | Manage Backings Module |  | 3d | 2016-07-19 | 2016-07-21 | 109 | 10d | 0d |
| 113 | 1.3.3.3.5 | Manage Categories Module |  | 3d | 2016-07-22 | 2016-07-26 | 112 | 10d |  |
| 114 | 1.3.3.3.6 | Mangage Silder Module |  | 3d | 2016-07-25 | 2016-07-27 | 110 | 9d |  |
| 115 | 1.3.3.4 | Complete Coding | milestone | 0d | 2016-07-28 | 2016-07-28 | 99, 108 | 8d |  |
| 116 | 1.3.4 | Create Progress Report 4 |  | 1d | 2016-07-29 | 2016-07-29 | 95, 97 | 11d | 0d |
| 117 | 1.3.5 | Submit Progress Report 4 | milestone | 0d | 2016-07-29 | 2016-07-29 | 116 | 11d |  |
| 118 | 1.3.6 | **Testing** |  | 26d | 2016-07-05 | 2016-08-09 |  |  |  |
| 119 | 1.3.6.1 | **Writing test case (continue)** |  | 10d? | 2016-07-05 | 2016-07-18 | 94 | 0d |  |
| 120 | 1.3.6.1.1 | **System test case** |  | 5d? | 2016-07-05 | 2016-07-11 |  | 0d |  |
| 121 | 1.3.6.1.1.1 | Create system test case |  | 3d | 2016-07-05 | 2016-07-07 |  | 0d |  |
| 122 | 1.3.6.1.1.2 | Review system test case |  | 1d? | 2016-07-08 | 2016-07-08 | 121 | 0d |  |
| 123 | 1.3.6.1.1.3 | Update system test case |  | 1d? | 2016-07-11 | 2016-07-11 | 122 | 0d |  |
| 124 | 1.3.6.1.2 | **Integration test case** |  | 5d? | 2016-07-12 | 2016-07-18 | 120 | 0d |  |
| 125 | 1.3.6.1.2.1 | Create integration test case |  | 3d | 2016-07-12 | 2016-07-14 |  | 0d |  |
| 126 | 1.3.6.1.2.2 | Review integration test case |  | 1d? | 2016-07-15 | 2016-07-15 | 125 | 0d |  |
| 127 | 1.3.6.1.2.3 | Update integration test case |  | 1d? | 2016-07-18 | 2016-07-18 | 126 | 0d |  |
| 128 | 1.3.6.1.3 | Writing test case complete | milestone | 0d | 2016-07-18 | 2016-07-18 | 124 | 0d |  |
| 129 | 1.3.6.2 | **Execute Test Round 1** |  | 8d | 2016-07-19 | 2016-07-28 | 119 | 0d |  |
| 130 | 1.3.6.2.1 | Execute Integration Test |  | 3d | 2016-07-19 | 2016-07-21 |  | 0d |  |
| 131 | 1.3.6.2.2 | Fix bug Integration Test |  | 2d | 2016-07-22 | 2016-07-25 | 130 | 10d |  |
| 132 | 1.3.6.2.3 | Execute System Test |  | 3d | 2016-07-22 | 2016-07-26 | 130 | 0d |  |
| 133 | 1.3.6.2.4 | Fix bug System Test |  | 2d | 2016-07-27 | 2016-07-28 | 132 | 7d |  |
| 134 | 1.3.6.3 | Update Test Case |  | 1d | 2016-07-27 | 2016-07-27 | 132 | 0d |  |

| ID | WBS | Task | Type | Duration | Start | Finish | Predecessors | Total slack | Free slack | Resources | Work |
| --- | --- | --- | --- | --- | --- | --- | --- | --- | --- | --- | --- |
| 135 | 1.3.6.4 | **Execute Test Round 2** |  | 8d | 2016-07-28 | 2016-08-08 | 134 | 0d |  |  |  |
| 136 | 1.3.6.4.1 | Execute Integration Test |  | 3d | 2016-07-28 | 2016-08-01 |  | 0d |  |  |  |
| 137 | 1.3.6.4.2 | Fix bug Integration Test |  | 2d | 2016-08-02 | 2016-08-03 | 136 | 3d |  |  |  |
| 138 | 1.3.6.4.3 | Execute System Test |  | 3d | 2016-08-02 | 2016-08-04 | 136 | 0d |  |  |  |
| 139 | 1.3.6.4.4 | Fix bug System Test |  | 2d | 2016-08-05 | 2016-08-08 | 138 | 0d |  |  |  |
| 140 | 1.3.6.5 | Create Test Report |  | 1d | 2016-08-09 | 2016-08-09 | 129, 135 | 0d |  |  |  |
| 141 | 1.3.6.6 | Testing Complete | milestone | 0d | 2016-08-09 | 2016-08-09 | 140 | 0d |  |  |  |
| 142 | 1.3.7 | **Quality Control** |  | 3d | 2016-08-10 | 2016-08-12 | 118, 97 | 0d |  |  |  |
| 143 | 1.3.7.1 | Create Quality Report |  | 2d | 2016-08-10 | 2016-08-11 |  | 0d |  |  |  |
| 144 | 1.3.7.2 | Review Quality Report |  | 0.5d | 2016-08-12 | 2016-08-12 | 143 | 0d |  |  |  |
| 145 | 1.3.7.3 | Update Quality Report |  | 0.5d | 2016-08-12 | 2016-08-12 | 144 | 0d |  |  |  |
| 146 | 1.3.8 | Create Progress Report 5 |  | 1d | 2016-08-15 | 2016-08-15 | 142 | 0d |  |  |  |
| 147 | 1.3.9 | Submit Progress Report 5 | milestone | 0d | 2016-08-15 | 2016-08-15 | 146 | 0d |  |  |  |
| 148 | 1.4 | **Termination** |  | 8d | 2016-08-17 | 2016-08-26 | 91 |  |  |  | 112h |
| 149 | 1.4.1 | Create lesson learned |  | 1d | 2016-08-17 | 2016-08-17 |  | -2d | 0d |  |  |
| 150 | 1.4.2 | **Final Report Document** |  | 2d | 2016-08-18 | 2016-08-19 | 149 | -2d | 0d |  | 112h |
| 151 | 1.4.2.1 | Create Final Report document |  | 2d | 2016-08-18 | 2016-08-19 |  | -2d | 0d | TrongPV | 16h |
| 152 | 1.4.2.2 | Create Installing Guide |  | 2d | 2016-08-18 | 2016-08-19 |  | -2d | 0d | SonNT; DocTeam | 32h |
| 153 | 1.4.2.3 | Create User Guideline |  | 2d | 2016-08-18 | 2016-08-19 |  | -2d | 0d | TamNV; DucNM | 32h |
| 154 | 1.4.2.4 | Create Project Result Assessment |  | 2d | 2016-08-18 | 2016-08-19 |  | -2d | 0d | PhucVT | 16h |
| 155 | 1.4.2.5 | Create Slides for Final Presentation |  | 2d | 2016-08-18 | 2016-08-19 |  | -2d | 0d | PROJECT TEAM | 16h |
| 156 | 1.4.3 | Submit all Final Documents and Source codes | milestone | 0d | 2016-08-19 | 2016-08-19 | 150 | 5d |  |  |  |
| 157 | 1.4.4 | **Pre-closing** |  | 5d | 2016-08-22 | 2016-08-26 |  | -2d | 0d |  |  |
| 158 | 1.4.4.1 | Trainning presentation |  | 5d | 2016-08-22 | 2016-08-26 | 150 | -2d | 0d |  |  |

| ID | WBS | Task | Type | Duration | Start | Finish | Predecessors | Total slack |
| --- | --- | --- | --- | --- | --- | --- | --- | --- |
| 159 | 1.4.5 | **Closing** |  | 2d | 2016-08-24 | 2016-08-26 | 158 |  |
| 160 | 1.4.5.1 | Presentation for Capstone Project |  | 2d | 2016-08-25 | 2016-08-26 |  | 0d |
| 161 | 1.4.5.2 | Complete Project | milestone | 0d | 2016-08-26 | 2016-08-26 | 160 | 0d |
