# IVSN_Project_Schedule_v1.0_EN

Schedule from MS Project, 2016-05-09 to 2016-08-19.

## Calendars

- Standard: Mon-Fri 08:00-12:00, 13:00-17:00; Sat-Sun off.

## Resources

| Resource |
| --- |
| PROJECT TEAM |
| TrongPV |
| SonNT |
| TamNV |
| DocTeam |
| DevTeam |
| DesignTeam |
| PhucVT |
| DucNM |
| TestTEAM |

## Schedule

| ID | WBS | Task | Type | Duration | Start | Finish | Predecessors | Total slack | Free slack | Constraint | Resources | Work |
| --- | --- | --- | --- | --- | --- | --- | --- | --- | --- | --- | --- | --- |
| 1 | 1 | **I Volunteer Social Network** |  | 75d | 2016-05-09 | 2016-08-19 |  |  |  |  |  | 648h |
| 2 | 1.1 | **Initiation** |  | 10d | 2016-05-09 | 2016-05-20 |  |  |  |  |  | 184h |
| 3 | 1.1.1 | **Project Preparation** |  | 1d | 2016-05-09 | 2016-05-09 |  | 1d |  |  |  | 4h |
| 4 | 1.1.1.1 | Form up team roles |  | 0.5d | 2016-05-09 | 2016-05-09 |  | 1d | 0d |  |  |  |
| 5 | 1.1.1.2 | Select project idea |  | 0.5d | 2016-05-09 | 2016-05-09 | 4 | 1d | 0d |  | PROJECT TEAM | 4h |
| 6 | 1.1.1.3 | Kick-off meeting | milestone | 0d | 2016-05-09 | 2016-05-09 | 5 | 9d |  |  |  |  |
| 7 | 1.1.2 | **Develop project idea** |  | 2d | 2016-05-10 | 2016-05-11 | 5 | 0.5d |  |  |  | 16h |
| 8 | 1.1.2.1 | Define project scope |  | 0.5d | 2016-05-10 | 2016-05-10 |  | 1.5d | 0d |  | PROJECT TEAM | 4h |
| 9 | 1.1.2.2 | Define project features |  | 0.5d | 2016-05-10 | 2016-05-10 | 8 | 1.5d |  |  | PROJECT TEAM | 4h |
| 10 | 1.1.2.3 | SRS/PP Review checklist | manual | 1d | 2016-05-11 | 2016-05-11 |  |  |  | start no earlier than 2016-05-11 | TamNV | 8h |
| 11 | 1.1.3 | **Project Introduction** |  | 4d | 2016-05-12 | 2016-05-18 | 7 |  |  |  |  | 48h |
| 12 | 1.1.3.1 | Create Project Introduction |  | 2d | 2016-05-12 | 2016-05-16 |  | 0d |  |  | PhucVT; TrongPV | 32h |
| 13 | 1.1.3.2 | Review Project Introduction |  | 1d | 2016-05-16 | 2016-05-17 | 12 | 0d |  |  | TamNV | 8h |
| 14 | 1.1.3.3 | Update Project Introduction |  | 1d | 2016-05-17 | 2016-05-18 | 13 | 0d |  |  | PROJECT TEAM | 8h |
| 15 | 1.1.3.4 | Complete Project Introduction | milestone | 0d | 2016-05-18 | 2016-05-18 | 14 | 67.5d |  | start no earlier than 2016-05-18 |  |  |
| 16 | 1.1.4 | **Project Plan** |  | 6.5d | 2016-05-12 | 2016-05-20 |  |  |  |  |  | 72h |
| 17 | 1.1.4.1 | Create Project Plan in MS Word |  | 3d | 2016-05-12 | 2016-05-17 |  | 3.5d | 0d |  | DucNM | 24h |
| 18 | 1.1.4.2 | Create Project Schedule in .mmp file |  | 1.5d | 2016-05-16 | 2016-05-17 | 17FF | 3.5d | 0.5d |  | PROJECT TEAM | 12h |
| 19 | 1.1.4.3 | Create CM Plan |  | 2d | 2016-05-13 | 2016-05-17 | 17FF | 3.5d | 0.5d |  | DevTeam | 16h |
| 20 | 1.1.4.4 | Review Project Plan, CMPlan, Schedule |  | 0.5d | 2016-05-18 | 2016-05-18 | 17, 18, 19 | 66d | 1d | start no earlier than 2016-05-18 | PROJECT TEAM | 4h |
| 21 | 1.1.4.5 | Update Project Plan, CMPlan, Schedule |  | 0.5d | 2016-05-19 | 2016-05-19 | 20 | 65d | 0d | finish no earlier than 2016-05-19 | PhucVT; TrongPV | 8h |
| 22 | 1.1.4.6 | Complete Project Plan |  | 1d | 2016-05-20 | 2016-05-20 | 21 | 65d |  | start no earlier than 2016-05-20 | PROJECT TEAM | 8h |
| 23 | 1.1.5 | **User Requirement Specification** |  | 3d | 2016-05-11 | 2016-05-13 |  |  |  |  |  | 24h |
| 24 | 1.1.5.1 | Create User Requirement Sepecification |  | 2d | 2016-05-11 | 2016-05-12 |  | 0d |  |  | DocTeam | 16h |
| 25 | 1.1.5.2 | Review User Requirement Specification |  | 0.5d | 2016-05-13 | 2016-05-13 | 24 | 0d |  |  | SonNT | 4h |
| 26 | 1.1.5.3 | Update User Requirement Specification |  | 0.5d | 2016-05-13 | 2016-05-13 | 25 | 0d |  |  | TamNV | 4h |
| 27 | 1.1.5.4 | Complete User Requirement Specification | milestone | 0d | 2016-05-13 | 2016-05-13 | 26 | 0d |  |  |  |  |

| ID | WBS | Task | Type | Duration | Start | Finish | Predecessors | Total slack | Constraint | Resources | Work |
| --- | --- | --- | --- | --- | --- | --- | --- | --- | --- | --- | --- |
| 28 | 1.1.6 | **Q&A Sheet** |  | 2d | 2016-05-19 | 2016-05-20 |  | 0d |  |  | 16h |
| 29 | 1.1.6.1 | Create Q&A sheet | manual | 1d | 2016-05-19 | 2016-05-19 |  |  |  | TamNV | 8h |
| 30 | 1.1.6.2 | Review Q&A sheet | manual | 0.5d | 2016-05-20 | 2016-05-20 | 29 |  |  | DucNM | 4h |
| 31 | 1.1.6.3 | Translate Q&A sheet to Japanese | manual | 0.5d | 2016-05-20 | 2016-05-20 | 30 |  |  | TamNV | 4h |
| 32 | 1.1.7 | **Report** |  | 1d | 2016-05-20 | 2016-05-20 |  | 0d |  |  | 4h |
| 33 | 1.1.7.1 | Create report 1 |  | 0.5d | 2016-05-20 | 2016-05-20 |  | 0.5d | start no earlier than 2016-05-20 | DucNM | 4h |
| 34 | 1.1.7.2 | Submit report 1 | milestone | 0d | 2016-05-20 | 2016-05-20 | 33, 23, 16, 28 | 0d |  | DucNM |  |
| 35 | 1.2 | **Execution** |  | 60d | 2016-05-23 | 2016-08-12 | 2 |  |  |  | 400h |
| 36 | 1.2.1 | **Circle 1** |  | 35d | 2016-05-23 | 2016-07-08 |  |  |  |  | 400h |
| 37 | 1.2.1.1 | **Planning** |  | 1d | 2016-05-23 | 2016-05-23 |  | 0d |  |  | 8h |
| 38 | 1.2.1.1.1 | Update Plan | manual | 1d | 2016-05-23 | 2016-05-23 | 16 |  |  | DucNM | 8h |
| 39 | 1.2.1.2 | **Requirement** |  | 5d | 2016-05-23 | 2016-05-27 | 23 |  |  |  | 40h |
| 40 | 1.2.1.2.1 | **Functional Requirements Specification** |  | 2d | 2016-05-23 | 2016-05-24 |  |  |  | TamNV | 16h |
| 41 | 1.2.1.2.1.1 | Define User Client Module functional Requirements | manual | 1d | 2016-05-23 | 2016-05-23 |  |  |  |  |  |
| 42 | 1.2.1.2.1.2 | Define Admin Module functional Requirments | manual | 1d | 2016-05-24 | 2016-05-24 |  |  |  |  |  |
| 43 | 1.2.1.2.2 | **Non-functional Requirements Specification** |  | 3d | 2016-05-25 | 2016-05-27 |  |  |  | TamNV | 24h |
| 44 | 1.2.1.2.2.1 | Define Security Requirements | manual | 1d | 2016-05-25 | 2016-05-25 |  |  |  |  |  |
| 45 | 1.2.1.2.2.2 | Define Performane Requirements | manual | 1d | 2016-05-26 | 2016-05-26 |  |  |  |  |  |
| 46 | 1.2.1.2.2.3 | Define User-interface Requirements | manual | 1d | 2016-05-27 | 2016-05-27 |  |  | start no earlier than 2016-05-27 |  |  |
| 47 | 1.2.1.3 | **Analysis and Design** |  | 15d | 2016-05-30 | 2016-06-17 |  |  |  |  | 216h |
| 48 | 1.2.1.3.1 | **Analysis** |  | 5d | 2016-05-30 | 2016-06-03 |  |  |  |  | 24h |
| 49 | 1.2.1.3.1.1 | Research Domain And Hosting | manual | 2d | 2016-05-30 | 2016-05-31 |  |  |  | TrongPV | 16h |
| 50 | 1.2.1.3.1.2 | Conduct Survey | manual | 2d | 2016-06-01 | 2016-06-02 |  |  |  |  |  |
| 51 | 1.2.1.3.1.3 | Collect Result | manual | 1d | 2016-06-03 | 2016-06-03 | 50 |  |  | TrongPV | 8h |

| ID | WBS | Task | Type | Duration | Start | Finish | Predecessors | Total slack | Free slack | Constraint | Resources | Work |
| --- | --- | --- | --- | --- | --- | --- | --- | --- | --- | --- | --- | --- |
| 52 | 1.2.1.3.2 | **Architectural Design** |  | 4d | 2016-05-31 | 2016-06-03 |  |  |  |  | DucNM | 32h |
| 53 | 1.2.1.3.2.1 | Define architectural design |  | 0.5d | 2016-05-31 | 2016-05-31 |  | 0.5d | 0d |  |  |  |
| 54 | 1.2.1.3.2.2 | Define system features |  | 1.5d | 2016-05-31 | 2016-06-01 | 53 | 0.5d | 0d |  |  |  |
| 55 | 1.2.1.3.2.3 | Create Architectural design |  | 1d | 2016-06-02 | 2016-06-02 | 54 | 0.5d | 0d |  |  |  |
| 56 | 1.2.1.3.2.4 | Review architectural design |  | 0.5d | 2016-06-03 | 2016-06-03 | 55 | 0.5d | 0d |  |  |  |
| 57 | 1.2.1.3.2.5 | Update Architectural Design |  | 0.5d | 2016-06-03 | 2016-06-03 | 56 | 55d |  | start no earlier than 2016-05-27 |  |  |
| 58 | 1.2.1.3.2.6 | Complete Architectural Design version 1.0 | milestone, manual | 0d | 2016-06-03 | 2016-06-03 |  |  |  |  |  |  |
| 59 | 1.2.1.3.3 | **Class/Component Design** |  | 5d | 2016-05-30 | 2016-06-03 |  |  |  |  | SonNT | 40h |
| 60 | 1.2.1.3.3.1 | Define Class and Component |  | 1d | 2016-05-30 | 2016-05-30 |  | 0d |  |  |  |  |
| 61 | 1.2.1.3.3.2 | Create Class/component design |  | 2d | 2016-05-31 | 2016-06-01 | 60 | 0d |  |  |  |  |
| 62 | 1.2.1.3.3.3 | Review Class/component design |  | 1d | 2016-06-02 | 2016-06-02 | 61 | 0d |  |  |  |  |
| 63 | 1.2.1.3.3.4 | Update Class/component design |  | 1d | 2016-06-03 | 2016-06-03 | 62 | 0d |  |  |  |  |
| 64 | 1.2.1.3.3.5 | Complete Class/component design | milestone | 0d | 2016-06-03 | 2016-06-03 |  | 56d |  | start no earlier than 2016-06-03 |  |  |
| 65 | 1.2.1.3.4 | **Screen design** |  | 15d | 2016-05-30 | 2016-06-17 |  |  |  |  | PhucVT | 120h |
| 66 | 1.2.1.3.4.1 | Create screen flow document |  | 2d | 2016-05-30 | 2016-05-31 |  | 13d |  |  |  |  |
| 67 | 1.2.1.3.4.2 | Create client screen design |  | 2d | 2016-05-30 | 2016-05-31 |  | 13d |  |  |  |  |
| 68 | 1.2.1.3.4.3 | Create admin screen design |  | 2d | 2016-05-30 | 2016-05-31 |  | 13d |  |  |  |  |
| 69 | 1.2.1.3.4.4 | Review screen design |  | 1d | 2016-05-30 | 2016-05-30 |  | 14d |  |  |  |  |
| 70 | 1.2.1.3.4.5 | Update screen design |  | 1d | 2016-05-30 | 2016-05-30 |  | 14d |  |  |  |  |
| 71 | 1.2.1.3.4.6 | Complete screen design | milestone | 0d | 2016-05-30 | 2016-05-30 |  | 15d |  |  |  |  |
| 72 | 1.2.1.3.4.7 | Screen Detail Design | manual | 10d | 2016-06-06 | 2016-06-17 |  |  |  |  |  |  |
| 73 | 1.2.1.3.5 | **Database design** |  | 5d | 2016-05-30 | 2016-06-03 |  |  |  |  |  |  |
| 74 | 1.2.1.3.5.1 | Create database design | manual | 3d | 2016-05-30 | 2016-06-01 |  |  |  |  |  |  |
| 75 | 1.2.1.3.5.2 | Review database design | manual | 1d | 2016-06-02 | 2016-06-02 |  |  |  |  |  |  |
| 76 | 1.2.1.3.5.3 | Update database design | manual | 1d | 2016-06-03 | 2016-06-03 |  |  |  |  |  |  |
| 77 | 1.2.1.3.5.4 | Complete database design | milestone, manual | 0d | 2016-06-03 | 2016-06-03 |  |  |  |  |  |  |

| ID | WBS | Task | Type | Duration | Start | Finish | Predecessors | Resources | Work |
| --- | --- | --- | --- | --- | --- | --- | --- | --- | --- |
| 78 | 1.2.1.4 | **Implementation** |  | 20d | 2016-06-13 | 2016-07-08 | 37, 39 |  | 136h |
| 79 | 1.2.1.4.1 | Build prototype | manual | 2d | 2016-06-13 | 2016-06-14 |  |  |  |
| 80 | 1.2.1.4.2 | Prototype approved | milestone, manual | 0d | 2016-06-14 | 2016-06-14 |  |  |  |
| 81 | 1.2.1.4.3 | **Coding product** |  | 6d | 2016-06-15 | 2016-06-22 |  |  |  |
| 82 | 1.2.1.4.3.1 | Develop UI | manual | 4d | 2016-06-15 | 2016-06-20 | 80 |  |  |
| 83 | 1.2.1.4.3.2 | Develop objects | manual | 1d | 2016-06-21 | 2016-06-21 | 82 |  |  |
| 84 | 1.2.1.4.3.3 | Create system documentation | manual | 1d | 2016-06-22 | 2016-06-22 | 83 |  |  |
| 85 | 1.2.1.4.4 | **Coding Modules** |  | 13d | 2016-06-22 | 2016-07-08 | 39 |  | 136h |
| 86 | 1.2.1.4.4.1 | **Part 1** |  | 7d | 2016-06-22 | 2016-06-30 |  |  | 72h |
| 87 | 1.2.1.4.4.1.1 | Homepage Module | manual | 3d | 2016-06-22 | 2016-06-24 |  | DevTeam | 24h |
| 88 | 1.2.1.4.4.1.2 | User personal page Module | manual | 1d | 2016-06-27 | 2016-06-27 |  | SonNT | 8h |
| 89 | 1.2.1.4.4.1.3 | Admin Module | manual | 1d | 2016-06-28 | 2016-06-28 |  | TamNV | 8h |
| 90 | 1.2.1.4.4.1.4 | Login/Logout Module | manual | 1d | 2016-06-29 | 2016-06-29 |  | SonNT | 8h |
| 91 | 1.2.1.4.4.1.5 | Friend Module | manual | 1d | 2016-06-30 | 2016-06-30 |  | DevTeam | 8h |
| 92 | 1.2.1.4.4.1.6 | Project Module | manual | 1d | 2016-06-28 | 2016-06-28 |  | SonNT | 8h |
| 93 | 1.2.1.4.4.1.7 | Group Module | manual | 1d | 2016-06-30 | 2016-06-30 |  | SonNT | 8h |
| 94 | 1.2.1.4.4.2 | **Part 2** |  | 6d | 2016-07-01 | 2016-07-08 | 86 |  | 64h |
| 95 | 1.2.1.4.4.2.1 | Album Module | manual | 1d | 2016-07-01 | 2016-07-01 |  | DucNM | 8h |
| 96 | 1.2.1.4.4.2.2 | Post Module | manual | 1d | 2016-07-04 | 2016-07-04 |  | DucNM; TamNV | 16h |
| 97 | 1.2.1.4.4.2.3 | Chat Module | manual | 1d | 2016-07-05 | 2016-07-05 |  | TamNV | 8h |
| 98 | 1.2.1.4.4.2.4 | Notification Module | manual | 1d | 2016-07-06 | 2016-07-06 |  | TamNV | 8h |
| 99 | 1.2.1.4.4.2.5 | Budget Module | manual | 1d | 2016-07-07 | 2016-07-07 |  | PhucVT | 8h |
| 100 | 1.2.1.4.4.2.6 | Planning Module | manual | 1d | 2016-07-08 | 2016-07-08 |  | PhucVT | 8h |
| 101 | 1.2.1.4.4.2.7 | Report Module | manual | 1d | 2016-07-08 | 2016-07-08 |  | TamNV | 8h |

| ID | WBS | Task | Type | Duration | Start | Finish | Predecessors | Total slack |
| --- | --- | --- | --- | --- | --- | --- | --- | --- |
| 102 | 1.2.1.5 | **Testing** |  | 15d | 2016-06-13 | 2016-07-01 | 39 |  |
| 103 | 1.2.1.5.1 | **Test Plan** |  | 5d | 2016-06-13 | 2016-06-17 |  |  |
| 104 | 1.2.1.5.1.1 | Create test plan/case checklists |  | 1d | 2016-06-13 | 2016-06-13 |  | 0d |
| 105 | 1.2.1.5.1.2 | Create test plan |  | 2d | 2016-06-14 | 2016-06-15 | 104 | 0d |
| 106 | 1.2.1.5.1.3 | Review test plan |  | 0.5d | 2016-06-16 | 2016-06-16 | 105 | 0d |
| 107 | 1.2.1.5.1.4 | Update test plan |  | 0.5d | 2016-06-16 | 2016-06-16 | 106 | 0d |
| 108 | 1.2.1.5.1.5 | Test plan complete |  | 1d | 2016-06-17 | 2016-06-17 | 107 | 0d |
| 109 | 1.2.1.5.2 | **Excute Test** |  | 10d | 2016-06-20 | 2016-07-01 | 108 |  |
| 110 | 1.2.1.5.2.1 | Create Intergration Test Case | manual | 3d | 2016-06-20 | 2016-06-22 |  |  |
| 111 | 1.2.1.5.2.2 | Execute Intergration Test | manual | 1d | 2016-06-23 | 2016-06-23 | 110 |  |
| 112 | 1.2.1.5.2.3 | Create Component Test Case | manual | 3d | 2016-06-24 | 2016-06-28 |  |  |
| 113 | 1.2.1.5.2.4 | Execute Component Test | manual | 1d | 2016-06-29 | 2016-06-29 | 112 |  |
| 114 | 1.2.1.5.2.5 | Create System Test Case | manual | 1d | 2016-06-30 | 2016-06-30 |  |  |
| 115 | 1.2.1.5.2.6 | Execute System Test | manual | 1d | 2016-07-01 | 2016-07-01 | 114 |  |
| 116 | 1.2.2 | **Circle 2** |  | 25d | 2016-07-11 | 2016-08-12 | 36 |  |
| 117 | 1.2.2.1 | **Planning** |  | 1d? | 2016-07-11 | 2016-07-11 |  |  |
| 118 | 1.2.2.1.1 | Update Plan | manual | 1d | 2016-07-11 | 2016-07-11 |  |  |
| 119 | 1.2.2.2 | **Requirement** |  | 2d | 2016-07-12 | 2016-07-13 |  |  |
| 120 | 1.2.2.2.1 | Update Requirement | manual | 2d | 2016-07-12 | 2016-07-13 |  |  |
| 121 | 1.2.2.3 | **Analysis and Design** |  | 2d | 2016-07-14 | 2016-07-15 |  |  |
| 122 | 1.2.2.3.1 | Update Design | manual | 2d | 2016-07-13 | 2016-07-14 | 120 |  |
| 123 | 1.2.2.4 | **Implementation** |  | 20d | 2016-07-18 | 2016-08-12 | 94, 122 |  |
| 124 | 1.2.2.4.1 | Fix bug Component Test | manual | 5d | 2016-07-18 | 2016-07-22 | 113 |  |
| 125 | 1.2.2.4.2 | Fix bug Intergration Test | manual | 5d | 2016-07-25 | 2016-07-29 | 111 |  |
| 126 | 1.2.2.4.3 | Fix bug System Test | manual | 5d | 2016-08-01 | 2016-08-05 | 115 |  |
| 127 | 1.2.2.4.4 | Fix bug | manual | 5d | 2016-08-08 | 2016-08-12 |  |  |

| ID | WBS | Task | Type | Duration | Start | Finish | Predecessors | Total slack | Resources | Work |
| --- | --- | --- | --- | --- | --- | --- | --- | --- | --- | --- |
| 128 | 1.2.2.5 | **Testing** |  | 25d | 2016-07-11 | 2016-08-12 | 102 |  |  |  |
| 129 | 1.2.2.5.1 | Update Component Test | manual | 5d | 2016-07-11 | 2016-07-15 | 113 |  |  |  |
| 130 | 1.2.2.5.2 | Execute Component Test | manual | 3d | 2016-07-18 | 2016-07-20 | 129 |  |  |  |
| 131 | 1.2.2.5.3 | Update Intergration Test | manual | 5d | 2016-07-21 | 2016-07-27 | 111 |  |  |  |
| 132 | 1.2.2.5.4 | Execute Intergration Test | manual | 3d | 2016-07-28 | 2016-08-01 | 131 |  |  |  |
| 133 | 1.2.2.5.5 | Update System Test | manual | 5d | 2016-08-02 | 2016-08-08 | 115 |  |  |  |
| 134 | 1.2.2.5.6 | Execute System Test | manual | 3d | 2016-08-09 | 2016-08-11 | 133 |  |  |  |
| 135 | 1.2.2.5.7 | Complete testing | manual | 1d | 2016-08-12 | 2016-08-12 | 130, 132, 134 |  |  |  |
| 136 | 1.2.3 | **Report** |  | 50d | 2016-06-03 | 2016-08-12 |  | 0d |  |  |
| 137 | 1.2.3.1 | Create report 2 | manual | 1d | 2016-06-03 | 2016-06-06 |  |  |  |  |
| 138 | 1.2.3.2 | Submit report 2 | milestone, manual | 0d | 2016-06-08 | 2016-06-08 |  |  |  |  |
| 139 | 1.2.3.3 | Create report 3 | manual | 1d | 2016-06-17 | 2016-06-17 |  |  |  |  |
| 140 | 1.2.3.4 | Submit report 3 | milestone, manual | 0d | 2016-06-24 | 2016-06-24 |  |  |  |  |
| 141 | 1.2.3.5 | Create report 4 | manual | 1d | 2016-08-05 | 2016-08-05 |  |  |  |  |
| 142 | 1.2.3.6 | Submit report 4 | milestone, manual | 0d | 2016-08-08 | 2016-08-08 |  |  |  |  |
| 143 | 1.2.3.7 | Create report 5 | manual | 1d | 2016-08-12 | 2016-08-12 |  |  |  |  |
| 144 | 1.2.3.8 | Submit report 5 | milestone, manual | 0d | 2016-08-12 | 2016-08-12 |  |  |  |  |
| 145 | 1.3 | **Deployment** |  | 2d | 2016-08-15 | 2016-08-16 | 116 |  |  | 16h |
| 146 | 1.3.1 | Create initial data | manual | 0.5d | 2016-08-15 | 2016-08-15 |  |  | PROJECT TEAM | 4h |
| 147 | 1.3.2 | Deploy to server | manual | 0.5d | 2016-08-15 | 2016-08-15 |  |  | TrongPV | 4h |
| 148 | 1.3.3 | Complete deployment | manual | 1d | 2016-08-16 | 2016-08-16 |  |  | TrongPV | 8h |
| 149 | 1.4 | **Termination** |  | 3d | 2016-08-17 | 2016-08-19 | 145 |  |  | 48h |
| 150 | 1.4.1 | **Final Report Document** |  | 2d | 2016-08-17 | 2016-08-18 |  |  |  | 40h |
| 151 | 1.4.1.1 | Create Final Report document |  | 1d | 2016-08-17 | 2016-08-17 |  | 1d | PROJECT TEAM | 8h |
| 152 | 1.4.1.2 | Create Installing Guide |  | 1d | 2016-08-17 | 2016-08-17 |  | 1d | TrongPV | 8h |
| 153 | 1.4.1.3 | Create User Guideline |  | 1d | 2016-08-17 | 2016-08-17 |  | 1d | TamNV | 8h |
| 154 | 1.4.1.4 | Create Project Result Assessment |  | 1d | 2016-08-17 | 2016-08-17 |  | 1d | DucNM | 8h |
| 155 | 1.4.1.5 | Create Slides for Final Presentation |  | 1d | 2016-08-17 | 2016-08-17 |  | 1d | PhucVT | 8h |
| 156 | 1.4.1.6 | Complete Lesson Learn | milestone, manual | 0d | 2016-08-18 | 2016-08-18 |  |  | PROJECT TEAM |  |

| ID | WBS | Task | Type | Duration | Start | Finish | Predecessors | Total slack | Free slack | Resources | Work |
| --- | --- | --- | --- | --- | --- | --- | --- | --- | --- | --- | --- |
| 157 | 1.4.2 | **Pre-closing** |  | 2d | 2016-08-18 | 2016-08-19 |  |  |  |  | 8h |
| 158 | 1.4.2.1 | Trainning presentation |  | 1d | 2016-08-19 | 2016-08-19 | 150 | -1d | 0d |  |  |
| 159 | 1.4.2.2 | Submit all Final Documents and Source codes | milestone | 0d | 2016-08-18 | 2016-08-18 |  | 2d |  |  |  |
| 160 | 1.4.2.3 | Create report 6 | manual | 1d | 2016-08-18 | 2016-08-18 |  |  |  | DucNM | 8h |
| 161 | 1.4.2.4 | Submit report 6 | milestone, manual | 0d | 2016-08-19 | 2016-08-19 |  |  |  | DucNM |  |
| 162 | 1.4.3 | **Closing** |  | 1d | 2016-08-19 | 2016-08-19 | 158 |  |  |  |  |
| 163 | 1.4.3.1 | Presentation for Capstone Project |  | 1d | 2016-08-19 | 2016-08-19 |  | 0d |  |  |  |
| 164 | 1.4.3.2 | Complete Project | milestone, manual | 0d | 2016-08-19 | 2016-08-19 |  |  |  |  |  |
